# Scrum - Cronograma de Proyecto

Schedule from MS Project, 2025-09-08 to 2025-11-25.

## Calendars

- Estándar: Mon-Fri 09:00-13:00, 15:00-19:00; Sat-Sun off.

## Schedule

| ID | WBS | Task | Duration | Start | Finish | Predecessors | Total slack |
| --- | --- | --- | --- | --- | --- | --- | --- |
| 1 | 1 | **REVISOR AUTOMÁTICO DE ESCRITURA ACADÉMICA** | 56.5d | 2025-09-08 09:00 | 2025-11-25 13:00 |  | 0d |
| 2 | 1.1 | **1.0 INICIO** | 3.5d | 2025-09-08 09:00 | 2025-09-11 13:00 |  | 0d |
| 3 | 1.1.1 | Redactar declaración de visión del producto | 1h | 2025-09-08 09:00 | 2025-09-08 10:00 |  | 0d |
| 4 | 1.1.2 | Identificar roles clave | 3h | 2025-09-08 10:00 | 2025-09-08 13:00 | 3 | 0d |
| 5 | 1.1.3 | Registro de interesados | 2h | 2025-09-08 15:00 | 2025-09-08 17:00 | 4 | 0d |
| 6 | 1.1.4 | Crear acta de constitución | 8h | 2025-09-08 17:00 | 2025-09-09 17:00 | 5 | 0d |
| 7 | 1.1.5 | Formar equipo Scrum | 2h | 2025-09-09 17:00 | 2025-09-09 19:00 | 6 | 0d |
| 8 | 1.1.6 | Desarrollar Epicas | 3h | 2025-09-10 09:00 | 2025-09-10 12:00 | 7 | 0d |
| 9 | 1.1.7 | Crear el backlog priorizado del producto | 5h | 2025-09-10 12:00 | 2025-09-10 19:00 | 8 | 0d |
| 10 | 1.1.8 | Crear la planificación de lanzamiento | 4h | 2025-09-11 09:00 | 2025-09-11 13:00 | 9 | 0d |
| 11 | 1.2 | **2.0 PLANIFICACION Y ESTIMACION** | 4d | 2025-09-11 15:00 | 2025-09-17 13:00 |  | 0d |
| 12 | 1.2.1 | **Configuración de gestión ágil en JIRA** | 1.5d | 2025-09-11 15:00 | 2025-09-12 19:00 |  | 0d |
| 13 | 1.2.1.1 | Refinamiento de épicas | 2h | 2025-09-11 15:00 | 2025-09-11 17:00 | 10 | 0d |
| 14 | 1.2.1.2 | Crear historias de usuario | 6h | 2025-09-11 17:00 | 2025-09-12 13:00 | 13 | 0d |
| 15 | 1.2.1.3 | Estimar historias de usuario | 2h | 2025-09-12 15:00 | 2025-09-12 17:00 | 14 | 0d |
| 16 | 1.2.1.4 | Planificar sprints | 1h | 2025-09-12 17:00 | 2025-09-12 18:00 | 15 | 0d |
| 17 | 1.2.1.5 | Asignar versiones | 1h | 2025-09-12 18:00 | 2025-09-12 19:00 | 16 | 0d |
| 18 | 1.2.2 | Redactar backlog del sprint | 2h | 2025-09-15 09:00 | 2025-09-15 11:00 | 17 | 0d |
| 19 | 1.2.3 | Documentar Backlog detallado del producto | 4h | 2025-09-15 11:00 | 2025-09-15 17:00 | 18 | 0d |
| 20 | 1.2.4 | Elaborar cronograma de alto nivel | 1h | 2025-09-15 17:00 | 2025-09-15 18:00 | 19 | 0d |
| 21 | 1.2.5 | Crear cronograma detallado | 5h | 2025-09-15 18:00 | 2025-09-16 13:00 | 20 | 0d |
| 22 | 1.2.6 | Elaborar presupuesto del proyecto | 4h | 2025-09-16 15:00 | 2025-09-16 19:00 | 21 | 0d |
| 23 | 1.2.7 | Elaborar el registro de riesgos | 4h | 2025-09-17 09:00 | 2025-09-17 13:00 | 22 | 0d |
| 24 | 1.3 | **3.0 IMPLEMENTACION, REVISION Y RETROSPECTIVA** | 44d | 2025-09-17 15:00 | 2025-11-18 13:00 |  | 0d |
| 25 | 1.3.1 | **SPRINT 1** | 11d | 2025-09-17 15:00 | 2025-10-02 13:00 |  | 0d |
| 26 | 1.3.1.1 | Reunión de planeación del sprint | 1h | 2025-09-17 15:00 | 2025-09-17 16:00 | 23 | 0d |
| 27 | 1.3.1.2 | Crear el backlog del sprint | 3h | 2025-09-17 16:00 | 2025-09-17 19:00 | 26 | 0d |

| ID | WBS | Task | Duration | Start | Finish | Predecessors | Total slack |
| --- | --- | --- | --- | --- | --- | --- | --- |
| 28 | 1.3.1.3 | **Desarrollo** | 7.12d | 2025-09-18 09:00 | 2025-09-29 10:00 |  | 0d |
| 29 | 1.3.1.3.1 | **HU03: Registro y autenticación** | 3.12d | 2025-09-18 09:00 | 2025-09-23 10:00 |  | 0d |
| 30 | 1.3.1.3.1.1 | Crear modelo de usuarios en MongoDB | 5h | 2025-09-18 09:00 | 2025-09-18 16:00 | 27 | 0d |
| 31 | 1.3.1.3.1.2 | Configurar encriptación de contraseñas con bcrypt | 2h | 2025-09-18 16:00 | 2025-09-18 18:00 | 30 | 0d |
| 32 | 1.3.1.3.1.3 | Implementar backend de autenticación con JWT | 8h | 2025-09-18 18:00 | 2025-09-19 18:00 | 31 | 0d |
| 33 | 1.3.1.3.1.4 | Desarrollar formulario de registro y login en React | 8h | 2025-09-19 18:00 | 2025-09-22 18:00 | 32 | 0d |
| 34 | 1.3.1.3.1.5 | Ejecutar pruebas unitarias y funcionales | 2h | 2025-09-22 18:00 | 2025-09-23 10:00 | 33 | 0d |
| 35 | 1.3.1.3.2 | **HU04: Gestión de roles** | 2d | 2025-09-23 10:00 | 2025-09-25 10:00 |  | 0d |
| 36 | 1.3.1.3.2.1 | Implementar middleware de autorización por roles | 6h | 2025-09-23 10:00 | 2025-09-23 18:00 | 34 | 0d |
| 37 | 1.3.1.3.2.2 | Implementar interfaz de gestión de roles en React | 8h | 2025-09-23 18:00 | 2025-09-24 18:00 | 36 | 0d |
| 38 | 1.3.1.3.2.3 | Pruebas | 2h | 2025-09-24 18:00 | 2025-09-25 10:00 | 37 | 0d |
| 39 | 1.3.1.3.3 | **HU05: Panel de seguimiento docente** | 1d | 2025-09-25 10:00 | 2025-09-26 10:00 |  | 0d |
| 40 | 1.3.1.3.3.1 | Diseñar lógica de cálculo de progreso académico | 2h | 2025-09-25 10:00 | 2025-09-25 12:00 | 38 | 0d |
| 41 | 1.3.1.3.3.2 | Implementar vista de progreso del estudiante | 5h | 2025-09-25 12:00 | 2025-09-25 19:00 | 40 | 0d |
| 42 | 1.3.1.3.3.3 | Pruebas | 1h | 2025-09-26 09:00 | 2025-09-26 10:00 | 41 | 0d |
| 43 | 1.3.1.3.4 | **HU14: Diseño responsive** | 0.5d | 2025-09-26 10:00 | 2025-09-26 16:00 |  | 0d |
| 44 | 1.3.1.3.4.1 | Implementar diseño responsive con React | 3h | 2025-09-26 10:00 | 2025-09-26 13:00 | 42 | 0d |
| 45 | 1.3.1.3.4.2 | Ejecutar pruebas simuladas en responsively.app | 1h | 2025-09-26 15:00 | 2025-09-26 16:00 | 44 | 0d |
| 46 | 1.3.1.3.5 | **HU15: Accesibilidad para discapacidad visual** | 0.5d | 2025-09-26 16:00 | 2025-09-29 10:00 |  | 0d |
| 47 | 1.3.1.3.5.1 | Integrar widget de accesibilidad con UserWay | 3h | 2025-09-26 16:00 | 2025-09-26 19:00 | 45 | 0d |
| 48 | 1.3.1.3.5.2 | Validar funcionamiento del widget | 1h | 2025-09-29 09:00 | 2025-09-29 10:00 | 47 | 0d |
| 49 | 1.3.1.4 | **Pruebas generales** | 2d | 2025-09-29 10:00 | 2025-10-01 10:00 |  | 0d |
| 50 | 1.3.1.4.1 | Pruebas de Regresión | 4h | 2025-09-29 10:00 | 2025-09-29 16:00 | 48 | 0d |
| 51 | 1.3.1.4.2 | Pruebas de Aceptación de Usuario (UAT) | 4h | 2025-09-29 16:00 | 2025-09-30 10:00 | 50 | 0d |
| 52 | 1.3.1.4.3 | Pruebas de Desempeño + Seguridad | 8h | 2025-09-30 10:00 | 2025-10-01 10:00 | 51 | 0d |
| 53 | 1.3.1.5 | Reunión de demostración y revisión del sprint | 2h | 2025-10-01 10:00 | 2025-10-01 12:00 | 52 | 0d |
| 54 | 1.3.1.6 | Reunión de retrospectiva del sprint | 1h | 2025-10-01 12:00 | 2025-10-01 13:00 | 53 | 0d |

| ID | WBS | Task | Duration | Start | Finish | Predecessors | Total slack |
| --- | --- | --- | --- | --- | --- | --- | --- |
| 55 | 1.3.1.7 | **Documentación del sprint** | 1d | 2025-10-01 15:00 | 2025-10-02 13:00 |  | 0d |
| 56 | 1.3.1.7.1 | Informe de estado del proyecto | 4h | 2025-10-01 15:00 | 2025-10-01 19:00 | 54 | 0d |
| 57 | 1.3.1.7.2 | Minuta de reunión | 2h | 2025-10-02 09:00 | 2025-10-02 11:00 | 56 | 0d |
| 58 | 1.3.1.7.3 | Registro de impedimentos | 2h | 2025-10-02 11:00 | 2025-10-02 13:00 | 57 | 0d |
| 59 | 1.3.2 | **SPRINT 2** | 10.5d | 2025-10-02 15:00 | 2025-10-16 19:00 |  | 0d |
| 60 | 1.3.2.1 | Reunión de planeación del sprint | 1h | 2025-10-02 15:00 | 2025-10-02 16:00 | 58 | 0d |
| 61 | 1.3.2.2 | Crear el backlog del sprint | 2h | 2025-10-02 16:00 | 2025-10-02 18:00 | 60 | 0d |
| 62 | 1.3.2.3 | **Desarrollo** | 6.75d | 2025-10-02 18:00 | 2025-10-13 16:00 |  | 0d |
| 63 | 1.3.2.3.1 | **HU01: Subida de documentos PDF** | 1d | 2025-10-02 18:00 | 2025-10-03 18:00 |  | 0d |
| 64 | 1.3.2.3.1.1 | Implementar interfaz de carga de PDF | 2h | 2025-10-02 18:00 | 2025-10-03 10:00 | 61 | 0d |
| 65 | 1.3.2.3.1.2 | Almacenar archivos PDF en mongo DB | 5h | 2025-10-03 10:00 | 2025-10-03 17:00 | 64 | 0d |
| 66 | 1.3.2.3.1.3 | Ejecutar pruebas funcionales de carga | 1h | 2025-10-03 17:00 | 2025-10-03 18:00 | 65 | 0d |
| 67 | 1.3.2.3.2 | **HU02: Análisis de coherencia con IA** | 3.5d | 2025-10-03 18:00 | 2025-10-09 12:00 |  | 0d |
| 68 | 1.3.2.3.2.1 | Integrar modelo IA en backend para análisis de coherencia textual | 2d | 2025-10-03 18:00 | 2025-10-07 18:00 | 66 | 0d |
| 69 | 1.3.2.3.2.2 | Desarrollar endpoint REST para enviar texto y recibir evaluación | 4h | 2025-10-07 18:00 | 2025-10-08 12:00 | 68 | 0d |
| 70 | 1.3.2.3.2.3 | Procesar respuesta del modelo y estructurar para visualización | 2h | 2025-10-08 12:00 | 2025-10-08 16:00 | 69 | 0d |
| 71 | 1.3.2.3.2.4 | Mostrar resultado del análisis en la interfaz | 5h | 2025-10-08 16:00 | 2025-10-09 11:00 | 70 | 0d |
| 72 | 1.3.2.3.2.5 | Ejecutar pruebas funcionales del flujo | 1h | 2025-10-09 11:00 | 2025-10-09 12:00 | 71 | 0d |
| 73 | 1.3.2.3.3 | **HU11: Verificación de citación APA/IEEE** | 2.25d | 2025-10-09 12:00 | 2025-10-13 16:00 |  | 0d |
| 74 | 1.3.2.3.3.1 | Implementar lógica de detección y validación de citaciones APA/IEEE | 4h | 2025-10-09 12:00 | 2025-10-09 18:00 | 72 | 0d |
| 75 | 1.3.2.3.3.2 | Integrar lógica de verificación con procesamiento del texto | 1d | 2025-10-09 18:00 | 2025-10-10 18:00 | 74 | 0d |
| 76 | 1.3.2.3.3.3 | Mostrar resultados del análisis de citación en la interfaz | 4h | 2025-10-10 18:00 | 2025-10-13 12:00 | 75 | 0d |
| 77 | 1.3.2.3.3.4 | Ejecutar pruebas con ejemplos correctos e incorrectos | 2h | 2025-10-13 12:00 | 2025-10-13 16:00 | 76 | 0d |
| 78 | 1.3.2.4 | **Pruebas generales** | 2d | 2025-10-13 16:00 | 2025-10-15 16:00 |  | 0d |
| 79 | 1.3.2.4.1 | Pruebas de Regresión | 4h | 2025-10-13 16:00 | 2025-10-14 10:00 | 77 | 0d |
| 80 | 1.3.2.4.2 | Pruebas de Aceptación de Usuario (UAT) | 4h | 2025-10-14 10:00 | 2025-10-14 16:00 | 79 | 0d |
| 81 | 1.3.2.4.3 | Pruebas de Desempeño + Seguridad | 8h | 2025-10-14 16:00 | 2025-10-15 16:00 | 80 | 0d |
| 82 | 1.3.2.5 | Reunión de demostración y revisión del sprint | 2h | 2025-10-15 16:00 | 2025-10-15 18:00 | 81 | 0d |
| 83 | 1.3.2.6 | Reunión de retrospectiva del sprint | 1h | 2025-10-15 18:00 | 2025-10-15 19:00 | 82 | 0d |

| ID | WBS | Task | Duration | Start | Finish | Predecessors | Total slack |
| --- | --- | --- | --- | --- | --- | --- | --- |
| 84 | 1.3.2.7 | **Documentación del sprint** | 1d | 2025-10-16 09:00 | 2025-10-16 19:00 |  | 0d |
| 85 | 1.3.2.7.1 | Informe de estado del proyecto | 4h | 2025-10-16 09:00 | 2025-10-16 13:00 | 83 | 0d |
| 86 | 1.3.2.7.2 | Minuta de reunión | 2h | 2025-10-16 15:00 | 2025-10-16 17:00 | 85 | 0d |
| 87 | 1.3.2.7.3 | Registro de impedimentos | 2h | 2025-10-16 17:00 | 2025-10-16 19:00 | 86 | 0d |
| 88 | 1.3.3 | **SPRINT 3** | 7.25d | 2025-10-17 09:00 | 2025-10-28 11:00 |  | 0d |
| 89 | 1.3.3.1 | Reunión de planeación del sprint | 1h | 2025-10-17 09:00 | 2025-10-17 10:00 | 87 | 0d |
| 90 | 1.3.3.2 | Crear el backlog del sprint | 2h | 2025-10-17 10:00 | 2025-10-17 12:00 | 89 | 0d |
| 91 | 1.3.3.3 | **Desarrollo** | 3.5d | 2025-10-17 12:00 | 2025-10-22 18:00 |  | 0d |
| 92 | 1.3.3.3.1 | **HU12: Detección básica de similitud** | 2.5d | 2025-10-17 12:00 | 2025-10-21 18:00 |  | 0d |
| 93 | 1.3.3.3.1.1 | Generar embeddings del texto con modelo local | 1d | 2025-10-17 12:00 | 2025-10-20 12:00 | 90 | 0d |
| 94 | 1.3.3.3.1.2 | Calcular porcentaje de similitud entre textos | 2h | 2025-10-20 12:00 | 2025-10-20 16:00 | 93 | 0d |
| 95 | 1.3.3.3.1.3 | Exponer endpoint de análisis de similitud en el backend | 3h | 2025-10-20 16:00 | 2025-10-20 19:00 | 94 | 0d |
| 96 | 1.3.3.3.1.4 | Mostrar porcentaje de similitud en frontend | 4h | 2025-10-21 09:00 | 2025-10-21 13:00 | 95 | 0d |
| 97 | 1.3.3.3.1.5 | Ejecutar pruebas con pares de textos variados | 3h | 2025-10-21 15:00 | 2025-10-21 18:00 | 96 | 0d |
| 98 | 1.3.3.3.2 | **HU06: Notificaciones en la aplicación web** | 1d | 2025-10-21 18:00 | 2025-10-22 18:00 |  | 0d |
| 99 | 1.3.3.3.2.1 | Diseñar arquitectura de notificaciones | 2h | 2025-10-21 18:00 | 2025-10-22 10:00 | 97 | 0d |
| 100 | 1.3.3.3.2.2 | Implementar backend para enviar notificaciones | 3h | 2025-10-22 10:00 | 2025-10-22 13:00 | 99 | 0d |
| 101 | 1.3.3.3.2.3 | Desarrollar icono de visualización en frontend | 1h | 2025-10-22 15:00 | 2025-10-22 16:00 | 100 | 0d |
| 102 | 1.3.3.3.2.4 | Configurar centro de notificaciones | 1h | 2025-10-22 16:00 | 2025-10-22 17:00 | 101 | 0d |
| 103 | 1.3.3.3.2.5 | Realizar prueba funcional de envío de notificacion | 1h | 2025-10-22 17:00 | 2025-10-22 18:00 | 102 | 0d |
| 104 | 1.3.3.4 | **Pruebas generales** | 2d | 2025-10-22 18:00 | 2025-10-24 18:00 |  | 0d |
| 105 | 1.3.3.4.1 | Pruebas de Regresión | 4h | 2025-10-22 18:00 | 2025-10-23 12:00 | 103 | 0d |
| 106 | 1.3.3.4.2 | Pruebas de Aceptación de Usuario (UAT) | 4h | 2025-10-23 12:00 | 2025-10-23 18:00 | 105 | 0d |
| 107 | 1.3.3.4.3 | Pruebas de Desempeño + Seguridad | 8h | 2025-10-23 18:00 | 2025-10-24 18:00 | 106 | 0d |
| 108 | 1.3.3.5 | Reunión de demostración y revisión del sprint | 2h | 2025-10-24 18:00 | 2025-10-27 10:00 | 107 | 0d |
| 109 | 1.3.3.6 | Reunión de retrospectiva del sprint | 1h | 2025-10-27 10:00 | 2025-10-27 11:00 | 108 | 0d |

| ID | WBS | Task | Duration | Start | Finish | Predecessors | Total slack |
| --- | --- | --- | --- | --- | --- | --- | --- |
| 110 | 1.3.3.7 | **Documentación del sprint** | 1d | 2025-10-27 11:00 | 2025-10-28 11:00 |  | 0d |
| 111 | 1.3.3.7.1 | Informe de estado del proyecto | 4h | 2025-10-27 11:00 | 2025-10-27 17:00 | 109 | 0d |
| 112 | 1.3.3.7.2 | Minuta de reunión | 2h | 2025-10-27 17:00 | 2025-10-27 19:00 | 111 | 0d |
| 113 | 1.3.3.7.3 | Registro de impedimentos | 2h | 2025-10-28 09:00 | 2025-10-28 11:00 | 112 | 0d |
| 114 | 1.3.4 | **SPRINT 4** | 7.75d | 2025-10-28 11:00 | 2025-11-06 19:00 |  | 0d |
| 115 | 1.3.4.1 | Reunión de planeación del sprint | 1h | 2025-10-28 11:00 | 2025-10-28 12:00 | 113 | 0d |
| 116 | 1.3.4.2 | Crear el backlog del sprint | 2h | 2025-10-28 12:00 | 2025-10-28 16:00 | 115 | 0d |
| 117 | 1.3.4.3 | **Desarrollo** | 4d | 2025-10-28 16:00 | 2025-11-03 16:00 |  | 0d |
| 118 | 1.3.4.3.1 | **HU07: Notificaciones por correo** | 1.5d | 2025-10-28 16:00 | 2025-10-30 10:00 |  | 0d |
| 119 | 1.3.4.3.1.1 | Configurar envío de correos con Nodemailer | 4h | 2025-10-28 16:00 | 2025-10-29 10:00 | 116 | 0d |
| 120 | 1.3.4.3.1.2 | Diseñar plantillas de correo HTML por eventos | 3h | 2025-10-29 10:00 | 2025-10-29 13:00 | 119 | 0d |
| 121 | 1.3.4.3.1.3 | Implementar lógica de disparo del correo por evento | 2h | 2025-10-29 15:00 | 2025-10-29 17:00 | 120 | 0d |
| 122 | 1.3.4.3.1.4 | Ejecutar pruebas de envío y recepción | 3h | 2025-10-29 17:00 | 2025-10-30 10:00 | 121 | 0d |
| 123 | 1.3.4.3.2 | **HU08: Automatización del flujo de revisión** | 2.5d | 2025-10-30 10:00 | 2025-11-03 16:00 |  | 0d |
| 124 | 1.3.4.3.2.1 | Diseñar el flujo automático completo en n8n | 5h | 2025-10-30 10:00 | 2025-10-30 17:00 | 122 | 0d |
| 125 | 1.3.4.3.2.2 | Integrar análisis IA en el flujo | 8h | 2025-10-30 17:00 | 2025-10-31 17:00 | 124 | 0d |
| 126 | 1.3.4.3.2.3 | Generar reporte automático del análisis | 4h | 2025-10-31 17:00 | 2025-11-03 11:00 | 125 | 0d |
| 127 | 1.3.4.3.2.4 | Enviar notificación del resultado | 1h | 2025-11-03 11:00 | 2025-11-03 12:00 | 126 | 0d |
| 128 | 1.3.4.3.2.5 | Ejecutar pruebas de extremo a extremo del flujo | 2h | 2025-11-03 12:00 | 2025-11-03 16:00 | 127 | 0d |
| 129 | 1.3.4.4 | **Pruebas generales** | 2d | 2025-11-03 16:00 | 2025-11-05 16:00 |  | 0d |
| 130 | 1.3.4.4.1 | Pruebas de Regresión | 4h | 2025-11-03 16:00 | 2025-11-04 10:00 | 128 | 0d |
| 131 | 1.3.4.4.2 | Pruebas de Aceptación de Usuario (UAT) | 4h | 2025-11-04 10:00 | 2025-11-04 16:00 | 130 | 0d |
| 132 | 1.3.4.4.3 | Pruebas de Desempeño + Seguridad | 8h | 2025-11-04 16:00 | 2025-11-05 16:00 | 131 | 0d |
| 133 | 1.3.4.5 | Reunión de demostración y revisión del sprint | 2h | 2025-11-05 16:00 | 2025-11-05 18:00 | 132 | 0d |
| 134 | 1.3.4.6 | Reunión de retrospectiva del sprint | 1h | 2025-11-05 18:00 | 2025-11-05 19:00 | 133 | 0d |

| ID | WBS | Task | Duration | Start | Finish | Predecessors | Total slack |
| --- | --- | --- | --- | --- | --- | --- | --- |
| 135 | 1.3.4.7 | **Documentación del sprint** | 1d | 2025-11-06 09:00 | 2025-11-06 19:00 |  | 0d |
| 136 | 1.3.4.7.1 | Informe de estado del proyecto | 4h | 2025-11-06 09:00 | 2025-11-06 13:00 | 134 | 0d |
| 137 | 1.3.4.7.2 | Minuta de reunión | 2h | 2025-11-06 15:00 | 2025-11-06 17:00 | 136 | 0d |
| 138 | 1.3.4.7.3 | Registro de impedimentos | 2h | 2025-11-06 17:00 | 2025-11-06 19:00 | 137 | 0d |
| 139 | 1.3.5 | **SPRINT 5** | 7.5d | 2025-11-07 09:00 | 2025-11-18 13:00 |  | 0d |
| 140 | 1.3.5.1 | Reunión de planeación del sprint | 1h | 2025-11-07 09:00 | 2025-11-07 10:00 | 138 | 0d |
| 141 | 1.3.5.2 | Crear el backlog del sprint | 2h | 2025-11-07 10:00 | 2025-11-07 12:00 | 140 | 0d |
| 142 | 1.3.5.3 | **Desarrollo** | 3.5d | 2025-11-07 12:00 | 2025-11-12 18:00 |  | 0d |
| 143 | 1.3.5.3.1 | **HU09: Panel de métricas administrativas** | 1d | 2025-11-07 12:00 | 2025-11-10 12:00 |  | 0d |
| 144 | 1.3.5.3.1.1 | Definir métricas clave | 1h | 2025-11-07 12:00 | 2025-11-07 13:00 | 141 | 0d |
| 145 | 1.3.5.3.1.2 | Implementar endpoints de métricas en backend | 2h | 2025-11-07 15:00 | 2025-11-07 17:00 | 144 | 0d |
| 146 | 1.3.5.3.1.3 | Diseñar e implementar panel visual | 4h | 2025-11-07 17:00 | 2025-11-10 11:00 | 145 | 0d |
| 147 | 1.3.5.3.1.4 | Ejecutar pruebas de consistencia de datos | 1h | 2025-11-10 11:00 | 2025-11-10 12:00 | 146 | 0d |
| 148 | 1.3.5.3.2 | **HU10: Panel de estadísticas de errores** | 1.5d | 2025-11-10 12:00 | 2025-11-11 18:00 |  | 0d |
| 149 | 1.3.5.3.2.1 | Definir categorías y tipos de errores | 1h | 2025-11-10 12:00 | 2025-11-10 13:00 | 147 | 0d |
| 150 | 1.3.5.3.2.2 | Registrar errores detectados en mongoDB | 3h | 2025-11-10 15:00 | 2025-11-10 18:00 | 149 | 0d |
| 151 | 1.3.5.3.2.3 | Crear consultas en backend de estadística de errores | 2h | 2025-11-10 18:00 | 2025-11-11 10:00 | 150 | 0d |
| 152 | 1.3.5.3.2.4 | Implementar visualización en React | 4h | 2025-11-11 10:00 | 2025-11-11 16:00 | 151 | 0d |
| 153 | 1.3.5.3.2.5 | Pruebas con datos reales para verificar precisión | 2h | 2025-11-11 16:00 | 2025-11-11 18:00 | 152 | 0d |
| 154 | 1.3.5.3.3 | **HU13: Extractor de palabras clave académicas** | 1d | 2025-11-11 18:00 | 2025-11-12 18:00 |  | 0d |
| 155 | 1.3.5.3.3.1 | Implementar lógica para extraer palabras clave en backend | 3h | 2025-11-11 18:00 | 2025-11-12 11:00 | 153 | 0d |
| 156 | 1.3.5.3.3.2 | Diseñar vista en React para mostrar palabras clave | 4h | 2025-11-12 11:00 | 2025-11-12 17:00 | 155 | 0d |
| 157 | 1.3.5.3.3.3 | Ejecutar pruebas con textos reales | 1h | 2025-11-12 17:00 | 2025-11-12 18:00 | 156 | 0d |
| 158 | 1.3.5.4 | **Pruebas generales** | 2d | 2025-11-12 18:00 | 2025-11-14 18:00 |  | 0d |
| 159 | 1.3.5.4.1 | Pruebas de Regresión | 4h | 2025-11-12 18:00 | 2025-11-13 12:00 | 157 | 0d |
| 160 | 1.3.5.4.2 | Pruebas de Aceptación de Usuario (UAT) | 4h | 2025-11-13 12:00 | 2025-11-13 18:00 | 159 | 0d |
| 161 | 1.3.5.4.3 | Pruebas de Desempeño + Seguridad | 8h | 2025-11-13 18:00 | 2025-11-14 18:00 | 160 | 0d |
| 162 | 1.3.5.5 | Reunión de demostración y revisión del sprint | 2h | 2025-11-14 18:00 | 2025-11-17 10:00 | 161 | 0d |
| 163 | 1.3.5.6 | Reunión de retrospectiva del sprint | 1h | 2025-11-17 10:00 | 2025-11-17 11:00 | 162 | 0d |

| ID | WBS | Task | Duration | Start | Finish | Predecessors | Total slack |
| --- | --- | --- | --- | --- | --- | --- | --- |
| 164 | 1.3.5.7 | **Documentación del sprint** | 1.25d | 2025-11-17 11:00 | 2025-11-18 13:00 |  | 0d |
| 165 | 1.3.5.7.1 | Informe de estado del proyecto | 4h | 2025-11-17 11:00 | 2025-11-17 17:00 | 163 | 0d |
| 166 | 1.3.5.7.2 | Minuta de reunión | 4h | 2025-11-17 17:00 | 2025-11-18 11:00 | 165 | 0d |
| 167 | 1.3.5.7.3 | Registro de impedimentos | 2h | 2025-11-18 11:00 | 2025-11-18 13:00 | 166 | 0d |
| 168 | 1.4 | **4.0 LANZAMIENTO** | 2.5d | 2025-11-18 15:00 | 2025-11-20 19:00 |  | 0d |
| 169 | 1.4.1 | Enviar entregables | 1d | 2025-11-18 15:00 | 2025-11-19 13:00 | 167 | 0d |
| 170 | 1.4.2 | Puesta en Producción | 1d | 2025-11-19 15:00 | 2025-11-20 13:00 | 169 | 0d |
| 171 | 1.4.3 | Reunión de Retrospectiva de Proyecto | 4h | 2025-11-20 15:00 | 2025-11-20 19:00 | 170 | 0d |
| 172 | 1.5 | **5.0 CIERRE** | 2.5d | 2025-11-21 09:00 | 2025-11-25 13:00 |  | 0d |
| 173 | 1.5.1 | Cierre financiero del proyecto | 4h | 2025-11-21 09:00 | 2025-11-21 13:00 | 171 | 0d |
| 174 | 1.5.2 | Liberar y evaluar recursos | 8h | 2025-11-21 15:00 | 2025-11-24 13:00 | 173 | 0d |
| 175 | 1.5.3 | Crear Acta de Cierre de Proyecto | 8h | 2025-11-24 15:00 | 2025-11-25 13:00 | 174 | 0d |
